# Neumann Residence - Construction Schedule

Schedule from MS Project XML, 2026-10-02 to 2027-08-17, status date 2026-10-13, A marks actual dates.
Chatsworth Fine Homes

## Calendars

- Chatsworth Standard: Mon-Fri 08:00-12:00, 13:00-17:00; Sat-Sun off. Exceptions (off unless hours are given): 2026-12-24 to 2027-01-01 (Christmas shutdown), 2027-02-15 (Family Day), 2027-03-26 (Good Friday), 2027-05-24 (Victoria Day), 2027-07-01 (Canada Day), 2027-08-02 (Civic Holiday).

## Schedule

| ID | WBS | Task | Type | Duration | Start | Finish | Predecessors | Complete | Baseline start | Baseline finish | Baseline duration | Total slack | Free slack | Constraint | Responsible |
| --- | --- | --- | --- | --- | --- | --- | --- | --- | --- | --- | --- | --- | --- | --- | --- |
| 1 | 1 | **Preconstruction, Design & Approvals** |  | 45d | 2026-10-02 | 2026-12-03 |  |  |  |  |  | -28d |  |  |  |
| 2 | 1.1 | CVC Permit 26/255 issued (expires Oct 2, 2028) | milestone | 0d | 2026-10-02 A | 2026-10-02 A |  | 100% | 2026-10-02 | 2026-10-02 |  |  |  | start no earlier than 2026-10-02 | Darren (Structured Creations) |
| 3 | 1.2 | Zoning review - City of Mississauga |  | 8d | 2026-10-13 | 2026-10-22 |  |  | 2026-10-13 | 2026-10-22 | 8d | -30d | 5d | start no earlier than 2026-10-13 | Darren (Structured Creations) |
| 4 | 1.3 | Correct A100 coverage table and CVC permit owner name |  | 3d | 2026-10-13 | 2026-10-15 |  |  | 2026-10-13 | 2026-10-15 | 3d | -25d | 10d | start no earlier than 2026-10-13 | Darren / Gosia |
| 5 | 1.4 | Working drawings - architectural & structural (incl. basement program) |  | 13d | 2026-10-13 | 2026-10-29 |  |  | 2026-10-13 | 2026-10-29 | 13d | -35d |  | start no earlier than 2026-10-13 | Darren (Structured Creations) |
| 6 | 1.5 | Building permit application submitted | milestone | 0d | 2026-10-29 | 2026-10-29 | 5, 3, 4 |  | 2026-10-29 | 2026-10-29 |  | -35d |  |  | Darren / Andrew |
| 7 | 1.6 | City permit review incl. one comment cycle (assumed 25 working days) |  | 25d | 2026-10-30 | 2026-12-03 | 6 |  | 2026-10-30 | 2026-12-03 | 25d | -35d |  |  | City of Mississauga |
| 8 | 1.7 | Building permit issued | milestone | 0d | 2026-12-03 | 2026-12-03 | 7 |  | 2026-12-03 | 2026-12-03 |  | -35d |  |  | City of Mississauga |
| 9 | 1.8 | Budget Revision 4 - anchor budget to current scope (incl. loft / 3rd floor) |  | 6d | 2026-10-13 | 2026-10-20 |  |  | 2026-10-13 | 2026-10-20 | 6d | 203d |  | start no earlier than 2026-10-13 | Dan / Gosia |
| 10 | 1.9 | Interior design drawings & ID budget (Vicky) |  | 15d | 2026-10-13 | 2026-11-02 |  |  | 2026-10-13 | 2026-11-02 | 15d | 32d |  | start no earlier than 2026-10-13 | Vicky (ID) / Gosia |
| 11 | 1.10 | Net Zero palette - incremental pricing by item |  | 10d | 2026-10-13 | 2026-10-26 |  |  | 2026-10-13 | 2026-10-26 | 10d | -14d |  | start no earlier than 2026-10-13 | Gosia / Building Knowledge |
| 12 | 1.11 | Client decision - Net Zero direction, fireplace, window spec |  | 5d | 2026-10-27 | 2026-11-02 | 11 |  | 2026-10-27 | 2026-11-02 | 5d | -14d |  |  | Stephen (Owner) |
| 13 | 1.12 | Price basement slab insulation options A / B incl. height loss |  | 10d | 2026-10-13 | 2026-10-26 |  |  | 2026-10-13 | 2026-10-26 | 10d | 72d |  | start no earlier than 2026-10-13 | Gosia |
| 14 | 1.13 | Client decision - basement slab option |  | 5d | 2026-10-27 | 2026-11-02 | 13 |  | 2026-10-27 | 2026-11-02 | 5d | 72d | 65d |  | Stephen (Owner) |
| 15 | 1.14 | Underground hydro service - pricing from City / Alectra |  | 15d | 2026-10-13 | 2026-11-02 |  |  | 2026-10-13 | 2026-11-02 | 15d | 145d |  | start no earlier than 2026-10-13 | Gosia |
| 16 | 1.15 | Client decision - underground hydro service |  | 5d | 2026-11-03 | 2026-11-09 | 15 |  | 2026-11-03 | 2026-11-09 | 5d | 145d | 45d |  | Stephen (Owner) |
| 17 | 1.16 | Generator sizing, pricing & client decision |  | 15d | 2026-10-19 | 2026-11-06 |  |  | 2026-10-19 | 2026-11-06 | 15d | 190d |  | start no earlier than 2026-10-19 | Dan / Stephen |
| 18 | 1.17 | Confirm builder's risk / wrap-up insurance & issue PO |  | 2d | 2026-10-13 | 2026-10-14 |  |  | 2026-10-13 | 2026-10-14 | 2d | -26d |  | start no earlier than 2026-10-13 | David |
| 19 | 2 | **Tendering, Trade Awards & Long-Lead Procurement** |  | 132d | 2026-10-13 | 2027-04-27 |  |  |  |  |  | -23d |  |  |  |
| 20 | 2.1 | Award demolition (recommend Manpower - $49,025 incl. asbestos & loft) |  | 2d | 2026-10-13 | 2026-10-14 |  |  | 2026-10-13 | 2026-10-14 | 2d | -23d | 3d | start no earlier than 2026-10-13 | Andrew / Dan |
| 21 | 2.2 | PO site hoarding, fence & silt control |  | 2d | 2026-10-13 | 2026-10-14 |  |  | 2026-10-13 | 2026-10-14 | 2d | 205d |  | start no earlier than 2026-10-13 | David |
| 22 | 2.3 | Book Alectra overhead disconnect & temp pole |  | 15d | 2026-10-13 | 2026-11-02 |  |  | 2026-10-13 | 2026-11-02 | 15d | -13d | 13d | start no earlier than 2026-10-13 | Gosia |
| 23 | 2.4 | Excavation quotes - Kruno / Grizzly; all-in-one vs. separate |  | 8d | 2026-10-13 | 2026-10-22 |  |  | 2026-10-13 | 2026-10-22 | 8d | -5d |  | start no earlier than 2026-10-13 | Gosia |
| 24 | 2.5 | Award excavation, foundation & underpinning (recommend EECF) |  | 5d | 2026-10-23 | 2026-10-29 | 23 |  | 2026-10-23 | 2026-10-29 | 5d | -5d | 30d |  | Dan / Gosia |
| 25 | 2.6 | Tender & award framing labour (RamPeel, King, Murray, Sunvalley, VAV) |  | 15d | 2026-10-13 | 2026-11-02 |  |  | 2026-10-13 | 2026-11-02 | 15d | 7d |  | start no earlier than 2026-10-13 | Gosia |
| 26 | 2.7 | PO lumber & roof framing; delivery |  | 10d | 2026-11-03 | 2026-11-16 | 25, 5 |  | 2026-11-03 | 2026-11-16 | 10d | 7d | 13d |  | Gosia |
| 27 | 2.8 | Steel beams - confirm scope, shop drawings, fabricate |  | 20d | 2026-10-30 | 2026-11-26 | 5 |  | 2026-10-30 | 2026-11-26 | 20d | -3d | 5d |  | Dan |
| 28 | 2.9 | Measure brick openings; issue window / mill schedule |  | 3d | 2026-10-15 | 2026-10-19 | 53 |  | 2026-10-15 | 2026-10-19 | 3d | -14d |  |  | Andrew / Stephen |
| 29 | 2.10 | Window tender - double vs. triple pane, heritage profile |  | 10d | 2026-10-20 | 2026-11-02 | 28 |  | 2026-10-20 | 2026-11-02 | 10d | -14d |  |  | Andrew |
| 30 | 2.11 | Window, exterior door & skylight PO |  | 3d | 2026-11-03 | 2026-11-05 | 29, 12 |  | 2026-11-03 | 2026-11-05 | 3d | -14d |  |  | Andrew / Stephen |
| 31 | 2.12 | Window, door & skylight fabrication & delivery (~10 wks) |  | 50d | 2026-11-06 | 2027-01-25 | 30 |  | 2026-11-06 | 2027-01-25 | 50d | -14d |  |  | Supplier |
| 32 | 2.13 | HVAC design / heat loss - heat pump, HRV/ERV per Net Zero direction |  | 15d | 2026-11-05 | 2026-11-25 | 67, 12 |  | 2026-11-05 | 2026-11-25 | 15d | 23d |  |  | Dan / Andrew / Gosia |
| 33 | 2.14 | Award HVAC / mechanical |  | 5d | 2026-11-26 | 2026-12-02 | 32 |  | 2026-11-26 | 2026-12-02 | 5d | 23d | 11d |  | Gosia |
| 34 | 2.15 | Award plumbing |  | 10d | 2026-12-01 | 2026-12-14 |  |  | 2026-12-01 | 2026-12-14 | 10d | 12d | 3d | start no earlier than 2026-12-01 | Gosia |
| 35 | 2.16 | Award electrical (confirm EV charging, solar & AV scope) |  | 10d | 2026-12-01 | 2026-12-14 |  |  | 2026-12-01 | 2026-12-14 | 10d | 15d | 6d | start no earlier than 2026-12-01 | Gosia |
| 36 | 2.17 | Award insulation & drywall |  | 10d | 2027-01-04 | 2027-01-15 |  |  | 2027-01-04 | 2027-01-15 | 10d | 39d | 6d | start no earlier than 2027-01-04 | Gosia |
| 37 | 2.18 | Award finishing trades - tile, flooring, trim, paint |  | 15d | 2027-03-01 | 2027-03-19 |  |  | 2027-03-01 | 2027-03-19 | 15d | 36d | 26d | start no earlier than 2027-03-01 | Gosia |
| 38 | 2.19 | Kitchen & cabinetry design approval |  | 20d | 2027-01-04 | 2027-01-29 | 10 |  | 2027-01-04 | 2027-01-29 | 20d |  |  | start no earlier than 2027-01-04 | Vicky (ID) / Stephen |
| 39 | 2.20 | Cabinetry shop drawings & sign-off |  | 15d | 2027-02-01 | 2027-02-22 | 38 |  | 2027-02-01 | 2027-02-22 | 15d |  |  |  | Cabinetmaker / Vicky |
| 40 | 2.21 | Cabinetry fabrication |  | 45d | 2027-02-23 | 2027-04-27 | 39 |  | 2027-02-23 | 2027-04-27 | 45d |  |  |  | Cabinetmaker |
| 41 | 2.22 | Interior stair & railing shop drawings & fabrication |  | 30d | 2027-03-04 | 2027-04-15 | 99 |  | 2027-03-04 | 2027-04-15 | 30d | 51d | 18d |  | Stair supplier |

Notes:
- 2: Credit Valley Conservation, O.Reg 41/24. Conditions: 48-hr notice before start and on completion; ESC installed before construction; restore disturbed areas. Any change in regulated area needs CVC amendment.
- 3: Outstanding as of Oct 8; holding up final architectural drawings.
- 4: A100 'Total Coverage' shows 70.80 m2, should be 290.80 m2. Permit lists Stephen & Robert Neumann; file has Stephen & Rachael.
- 5: Target end of October for permit submission. Basement mechanical/layout questions (RFI-002) to feed in.
- 7: Assumption - adjust this duration once the City confirms review timing. Drives all structural/exterior work.
- 8: Status report target was Oct 30; meeting notes now show submission end of October.
- 9: Rev 3 omits loft/3rd floor. Demo bid already shows $9,982.94 scope change (asbestos + loft). Carry 10-15% contingency.
- 11: Stephen to decide item by item. Wood-burning fireplace flagged as a potential Net Zero deal breaker.
- 12: Drives window SHGC/glazing, heat pump vs. existing furnaces, insulation levels, solar.
- 13: A: remove slab, insulate under, re-pour (preferred if new plumbing). B: insulate over slab, double-board.
- 15: Needed before the 2nd-floor bump-out wall comes down.
- 17: RFI-008. Overhead line through ravine - tree strike risk. Not in budget.
- 18: Overdue (due Oct 9). Required before site possession.
- 20: Budget $30,000. Scope change $9,982.94 required (asbestos $4,775 + loft $5,207.94).
- 22: Overhead line runs through 2nd-floor bump-out (bathroom area).
- 23: Excavation + slab est. $50-60K. All-in-one may save ~$10K and reduce coordination.
- 24: EECF $44,310 levelled incl. winter heat. Confirm in writing underpinning is included (p.3 boilerplate excludes it).
- 25: RamPeel $62,650 vs. $62,500 labour budget.
- 27: Not carried in budget (carport steel removed). Confirm with structural.
- 28: No dimensions on drawings. Suppliers to measure Day 1 or 2.
- 29: Budget $98K (49 units). Wellington Windows, Mullins. Price all-windows and outlined-only options.
- 31: Lead time assumption - confirm with awarded supplier.
- 32: Ask Darren who he uses; McCallum preferred.
- 35: Common scope gaps: EV charging, solar, AV/automation - none carried in Rev 3.
- 38: Budget $176,400.

| ID | WBS | Task | Type | Duration | Start | Finish | Predecessors | Baseline start | Baseline finish | Baseline duration | Total slack | Free slack | Constraint | Deadline | Responsible |
| --- | --- | --- | --- | --- | --- | --- | --- | --- | --- | --- | --- | --- | --- | --- | --- |
| 42 | 3 | **Owner & Interior Design Selections** |  | 103d | 2026-11-03 | 2027-04-07 |  |  |  |  | 32d |  |  |  |  |
| 43 | 3.1 | Electrical, lighting & AV / automation layouts |  | 10d | 2026-11-03 | 2026-11-16 | 10 | 2026-11-03 | 2026-11-16 | 10d | 35d | 26d |  |  | Vicky / Stephen |
| 44 | 3.2 | Plumbing fixtures & bathroom layouts (curbless showers ensuite 1 & 2) |  | 10d | 2026-11-03 | 2026-11-16 | 10 | 2026-11-03 | 2026-11-16 | 10d | 32d | 23d |  |  | Vicky / Stephen |
| 45 | 3.3 | Fireplace / logsets & mantels |  | 5d | 2026-11-03 | 2026-11-09 | 12 | 2026-11-03 | 2026-11-09 | 5d | 49d | 33d |  |  | Stephen |
| 46 | 3.4 | Exterior - cedar shake, metal panel, colours, railings, garage door |  | 10d | 2027-01-11 | 2027-01-22 |  | 2027-01-11 | 2027-01-22 | 10d | 83d | 48d | start no earlier than 2027-01-11 |  | Stephen / Darren |
| 47 | 3.5 | Hardwood, floor tile & wall tile |  | 10d | 2027-02-01 | 2027-02-12 |  | 2027-02-01 | 2027-02-12 | 10d | 45d | 35d | start no earlier than 2027-02-01 |  | Vicky / Stephen |
| 48 | 3.6 | Trim, interior doors, plaster mouldings, hardware |  | 10d | 2027-02-16 | 2027-03-01 |  | 2027-02-16 | 2027-03-01 | 10d | 33d | 26d | start no earlier than 2027-02-15 |  | Vicky / Stephen |
| 49 | 3.7 | Appliances |  | 5d | 2027-02-01 | 2027-02-05 | 38 | 2027-02-01 | 2027-02-05 | 5d | 76d | 47d |  |  | Stephen |
| 50 | 3.8 | Countertop slabs, shower glass & bath hardware |  | 10d | 2027-03-15 | 2027-03-29 |  | 2027-03-15 | 2027-03-29 | 10d | 31d |  | start no earlier than 2027-03-15 |  | Vicky / Stephen |
| 51 | 3.9 | Paint finish schedule |  | 5d | 2027-04-01 | 2027-04-07 |  | 2027-04-01 | 2027-04-07 | 5d | 37d | 30d | start no earlier than 2027-04-01 |  | Vicky / Stephen |
| 52 | 4 | **Site Mobilization & Pre-Demolition** |  | 3d | 2026-10-15 | 2026-10-19 |  |  |  |  | -26d |  |  |  |  |
| 53 | 4.1 | Site possession - family moved out (confirm Oct 15) | milestone | 0d | 2026-10-15 | 2026-10-15 | 18 | 2026-10-15 | 2026-10-15 |  | -26d |  | start no earlier than 2026-10-15 |  | Stephen (Owner) |
| 54 | 4.2 | Building Knowledge as-is audit & baseline air test |  | 1d | 2026-10-15 | 2026-10-15 | 53 | 2026-10-15 | 2026-10-15 | 1d | -26d |  |  |  | Andrew / Building Knowledge |
| 55 | 4.3 | Pre-demolition condition photos (HST rebate documentation) |  | 1d | 2026-10-15 | 2026-10-15 | 53 | 2026-10-15 | 2026-10-15 | 1d | -26d |  |  |  | Andrew / Stephen |
| 56 | 4.4 | Designated substance / hazardous materials confirmation |  | 1d | 2026-10-15 | 2026-10-15 | 53 | 2026-10-15 | 2026-10-15 | 1d | -23d | 2d |  |  | Andrew |
| 57 | 4.5 | Job site sign & Notice of Project posted |  | 1d | 2026-10-15 | 2026-10-15 | 53 | 2026-10-15 | 2026-10-15 | 1d | 206d |  |  |  | Dillon |
| 58 | 4.6 | Site fencing, tree protection & erosion / sediment controls |  | 2d | 2026-10-15 | 2026-10-16 | 53, 21 | 2026-10-15 | 2026-10-16 | 2d | 205d |  |  |  | Site super |
| 59 | 4.7 | Temp facilities - porta potty, bins, security, internet |  | 1d | 2026-10-15 | 2026-10-15 | 53 | 2026-10-15 | 2026-10-15 | 1d | 206d |  |  |  | Site super |
| 60 | 4.8 | Remove, label & store salvage items |  | 2d | 2026-10-16 | 2026-10-19 | 54, 55 | 2026-10-16 | 2026-10-19 | 2d | -26d |  |  |  | Site super |
| 61 | 5 | **Interior Demolition (non-structural, pre-permit)** |  | 23d | 2026-10-20 | 2026-11-19 |  |  |  |  | -26d |  |  |  |  |
| 62 | 5.1 | Asbestos abatement - 2nd floor SW & SE bedroom ceilings |  | 3d | 2026-10-20 | 2026-10-22 | 60, 56, 20 | 2026-10-20 | 2026-10-22 | 3d | -25d | 1d |  |  | Demo trade |
| 63 | 5.2 | Strip-out - loft / 3rd floor |  | 4d | 2026-10-20 | 2026-10-23 | 60, 20 | 2026-10-20 | 2026-10-23 | 4d | -26d |  |  |  | Demo trade |
| 64 | 5.3 | Strip-out - second floor |  | 7d | 2026-10-26 | 2026-11-03 | 62, 63 | 2026-10-26 | 2026-11-03 | 7d | -26d |  |  |  | Demo trade |
| 65 | 5.4 | Strip-out - main floor |  | 7d | 2026-11-04 | 2026-11-12 | 64 | 2026-11-04 | 2026-11-12 | 7d | -26d |  |  |  | Demo trade |
| 66 | 5.5 | Strip-out - basement |  | 5d | 2026-11-13 | 2026-11-19 | 65 | 2026-11-13 | 2026-11-19 | 5d | -26d |  |  |  | Demo trade |
| 67 | 5.6 | HVAC designer as-is walk (ducting exposed) |  | 1d | 2026-11-04 | 2026-11-04 | 64 | 2026-11-04 | 2026-11-04 | 1d | 23d |  |  |  | Andrew |
| 68 | 5.7 | Assess existing rough-ins - keep / replace decisions |  | 3d | 2026-11-13 | 2026-11-17 | 65 | 2026-11-13 | 2026-11-17 | 3d | -24d | 2d |  |  | Dan / Andrew / trades |
| 69 | 5.8 | Interior demolition complete | milestone | 0d | 2026-11-19 | 2026-11-19 | 66, 68 | 2026-11-19 | 2026-11-19 |  | -26d |  |  | 2026-11-20 |  |

Notes:
- 44: RFI-015: add pot filler at dog station.
- 45: Existing fireplace to remain; reclad with salvaged brick if possible.
- 49: Budget $50,000.
- 53: Confirm whether Oct 15 is move-out day or first day on site. Stephen's Oct 8 email references Nov 15 - clarify.
- 54: Must precede demo to establish baseline.
- 55: RFI-018. Substantial reconstruction rebate est. $50-60K.
- 58: CVC condition: ESC installed before construction and maintained until stabilized.
- 60: Pocket doors (hall/sitting), stained glass (sitting & powder), foyer glass door, intercom panel. Protect fireplace.
- 67: Before mid-November.
- 68: Wiring, HVAC ducting. Focus on Stephen's worst-performing rooms (RFI-007).

| ID | WBS | Task | Duration | Start | Finish | Predecessors | Baseline start | Baseline finish | Baseline duration | Total slack | Free slack | Responsible |
| --- | --- | --- | --- | --- | --- | --- | --- | --- | --- | --- | --- | --- |
| 70 | 6 | **Utilities & Temporary Services** | 42d | 2026-11-20 | 2027-01-27 |  |  |  |  | -26d |  |  |
| 71 | 6.1 | Disconnect overhead service; temp pole & panel | 2d | 2026-11-20 | 2026-11-23 | 22, 69 | 2026-11-20 | 2026-11-23 | 2d | -26d | 9d | Electrician / Alectra |
| 72 | 6.2 | Permanent hydro service (underground if approved) | 5d | 2027-01-21 | 2027-01-27 | 16, 91 | 2027-01-21 | 2027-01-27 | 5d | 100d | 62d | Alectra / Electrician |
| 73 | 6.3 | Gas service remove & reinstall as required (Enbridge) | 3d | 2027-01-21 | 2027-01-25 | 91 | 2027-01-21 | 2027-01-25 | 3d | 141d |  | Gas fitter |
| 74 | 7 | **Site Work, Excavation & Foundations (rear addition)** | 27d | 2026-12-04 | 2027-01-20 |  |  |  |  | -35d |  |  |
| 75 | 7.1 | CVC 48-hr notice of commencement; permit card posted | 1d | 2026-12-04 | 2026-12-04 | 8 | 2026-12-04 | 2026-12-04 | 1d | -35d |  | Andrew |
| 76 | 7.2 | Survey stake-out of addition | 1d | 2026-12-07 | 2026-12-07 | 75 | 2026-12-07 | 2026-12-07 | 1d | -33d |  | Surveyor |
| 77 | 7.3 | Structural demo - rear deck / porch, openings, 2nd-floor bump-out wall | 4d | 2026-12-07 | 2026-12-10 | 75, 71, 69 | 2026-12-07 | 2026-12-10 | 4d | -35d |  | Demo trade |
| 78 | 7.4 | Strip & stockpile topsoil | 1d | 2026-12-08 | 2026-12-08 | 76 | 2026-12-08 | 2026-12-08 | 1d | -33d | 2d | Excavator |
| 79 | 7.5 | Excavate rear addition | 3d | 2026-12-11 | 2026-12-15 | 78, 24, 77 | 2026-12-11 | 2026-12-15 | 3d | -35d |  | Excavator |
| 80 | 7.6 | Underpinning - 8 sections, sequenced | 10d | 2026-12-16 | 2027-01-07 | 79 | 2026-12-16 | 2027-01-07 | 10d | -35d |  | Foundation trade |
| 81 | 7.7 | Layout, pin & form footings | 2d | 2026-12-16 | 2026-12-17 | 79 | 2026-12-16 | 2026-12-17 | 2d | -33d |  | Foundation trade |
| 82 | 7.8 | Footing inspection | 1d | 2026-12-18 | 2026-12-18 | 81 | 2026-12-18 | 2026-12-18 | 1d | -33d |  | City inspector |
| 83 | 7.9 | Pour footings (winter heat) | 1d | 2026-12-21 | 2026-12-21 | 82 | 2026-12-21 | 2026-12-21 | 1d | -33d |  | Foundation trade |
| 84 | 7.10 | Form foundation walls & install rebar | 3d | 2026-12-22 | 2027-01-04 | 83 | 2026-12-22 | 2027-01-04 | 3d | -33d |  | Foundation trade |
| 85 | 7.11 | Engineer's rebar inspection | 1d | 2027-01-05 | 2027-01-05 | 84 | 2027-01-05 | 2027-01-05 | 1d | -33d | 2d | Structural engineer |
| 86 | 7.12 | Pour foundation walls | 1d | 2027-01-08 | 2027-01-08 | 85, 80 | 2027-01-08 | 2027-01-08 | 1d | -35d |  | Foundation trade |
| 87 | 7.13 | Strip forms; check heights & anchor bolts | 2d | 2027-01-11 | 2027-01-12 | 86 | 2027-01-11 | 2027-01-12 | 2d | -35d |  | Foundation trade |
| 88 | 7.14 | Membrane, 2" exterior insulation, weepers, stone & sump | 3d | 2027-01-13 | 2027-01-15 | 87 | 2027-01-13 | 2027-01-15 | 3d | -35d |  | Foundation trade |
| 89 | 7.15 | Foundation as-built survey | 1d | 2027-01-13 | 2027-01-13 | 87 | 2027-01-13 | 2027-01-13 | 1d | -32d | 3d | Surveyor |
| 90 | 7.16 | Backfill inspection | 1d | 2027-01-18 | 2027-01-18 | 88 | 2027-01-18 | 2027-01-18 | 1d | -35d |  | City inspector |
| 91 | 7.17 | Backfill & rough grade | 2d | 2027-01-19 | 2027-01-20 | 90, 89 | 2027-01-19 | 2027-01-20 | 2d | -35d |  | Excavator |
| 92 | 8 | **Framing & Structure** | 56d | 2026-12-04 | 2027-03-03 |  |  |  |  | -8d |  |  |
| 93 | 8.1 | Interior structural alterations - openings, beams, bulkheads | 10d | 2026-12-04 | 2026-12-17 | 8, 69, 26, 27 | 2026-12-04 | 2026-12-17 | 10d | 9d |  | Framer |
| 94 | 8.2 | Install steel beams / posts | 2d | 2027-01-21 | 2027-01-22 | 91, 27 | 2027-01-21 | 2027-01-22 | 2d | -35d |  | Framer / welder |
| 95 | 8.3 | Frame main floor deck - rear addition | 4d | 2027-01-25 | 2027-01-28 | 94, 26 | 2027-01-25 | 2027-01-28 | 4d | -35d |  | Framer |
| 96 | 8.4 | Frame addition walls & flat roof | 6d | 2027-01-29 | 2027-02-05 | 95 | 2027-01-29 | 2027-02-05 | 6d | -35d |  | Framer |
| 97 | 8.5 | Cantilevered box bays, 2nd-floor infill & balcony | 8d | 2027-02-08 | 2027-02-18 | 96, 77 | 2027-02-08 | 2027-02-18 | 8d | -35d |  | Framer |
| 98 | 8.6 | Roof & wall sheathing; Zip-R outsulation | 6d | 2027-02-19 | 2027-02-26 | 97 | 2027-02-19 | 2027-02-26 | 6d | -35d |  | Framer |
| 99 | 8.7 | Framing review - point loads, engineer review, deficiencies | 3d | 2027-03-01 | 2027-03-03 | 98, 93 | 2027-03-01 | 2027-03-03 | 3d | 3d |  | Framer / engineer |

Notes:
- 71: Interim plan until permanent service.
- 75: Diarize.
- 79: Normal soil assumed.
- 93: Can proceed in parallel with foundations.

| ID | WBS | Task | Type | Duration | Start | Finish | Predecessors | Baseline start | Baseline finish | Baseline duration | Total slack | Free slack | Deadline | Responsible |
| --- | --- | --- | --- | --- | --- | --- | --- | --- | --- | --- | --- | --- | --- | --- |
| 100 | 9 | **Building Envelope - Weathertight** |  | 29d | 2027-01-26 | 2027-03-08 |  |  |  |  | -14d |  |  |  |
| 101 | 9.1 | Temporary enclosure, tarping & winter heat |  | 3d | 2027-02-08 | 2027-02-10 | 96 | 2027-02-08 | 2027-02-10 | 3d | 7d |  |  | Site super |
| 102 | 9.2 | Flat roof membrane & flashings (addition, balcony) |  | 3d | 2027-03-01 | 2027-03-03 | 98 | 2027-03-01 | 2027-03-03 | 3d | -35d |  |  | Roofer |
| 103 | 9.3 | Shingle roof tie-ins & repairs |  | 3d | 2027-03-04 | 2027-03-08 | 102 | 2027-03-04 | 2027-03-08 | 3d | -35d |  |  | Roofer |
| 104 | 9.4 | Replace designated windows & doors in existing openings |  | 8d | 2027-01-26 | 2027-02-04 | 31, 69 | 2027-01-26 | 2027-02-04 | 8d | -14d | 21d |  | Window installer |
| 105 | 9.5 | Install windows & doors - rear addition & box bays |  | 4d | 2027-03-01 | 2027-03-04 | 31, 98 | 2027-03-01 | 2027-03-04 | 4d | -33d | 2d |  | Window installer |
| 106 | 9.6 | Install architectural skylight |  | 2d | 2027-03-04 | 2027-03-05 | 31, 102 | 2027-03-04 | 2027-03-05 | 2d | -34d | 1d |  | Roofer |
| 107 | 9.7 | Watertight | milestone | 0d | 2027-03-08 | 2027-03-08 | 102, 103, 104, 105, 106 | 2027-03-08 | 2027-03-08 |  | -35d |  | 2027-01-15 |  |
| 108 | 10 | **Basement Slab & Underground Services** |  | 10d | 2027-02-11 | 2027-02-25 |  |  |  |  | 7d |  |  |  |
| 109 | 10.1 | Subgrade drains & underground plumbing |  | 4d | 2027-02-11 | 2027-02-17 | 91, 14, 34, 101 | 2027-02-11 | 2027-02-17 | 4d | 7d |  |  | Plumber |
| 110 | 10.2 | Underground drain inspection |  | 1d | 2027-02-18 | 2027-02-18 | 109 | 2027-02-18 | 2027-02-18 | 1d | 7d |  |  | City inspector |
| 111 | 10.3 | Under-slab insulation, radon / vapour barrier |  | 2d | 2027-02-19 | 2027-02-22 | 110 | 2027-02-19 | 2027-02-22 | 2d | 7d |  |  | Concrete trade |
| 112 | 10.4 | In-floor hydronic tubing (if carried in mechanical design) |  | 2d | 2027-02-23 | 2027-02-24 | 111, 33 | 2027-02-23 | 2027-02-24 | 2d | 7d |  |  | Mechanical |
| 113 | 10.5 | Pour basement slab |  | 1d | 2027-02-25 | 2027-02-25 | 112 | 2027-02-25 | 2027-02-25 | 1d | 7d |  |  | Concrete trade |
| 114 | 11 | **Mechanical, Electrical & Low-Voltage Rough-In** |  | 59d | 2026-12-18 | 2027-03-22 |  |  |  |  |  |  |  |  |
| 115 | 11.1 | Rough-in plumbing - existing house |  | 10d | 2026-12-18 | 2027-01-11 | 93, 71, 34, 44 | 2026-12-18 | 2027-01-11 | 10d | 9d |  |  | Plumber |
| 116 | 11.2 | Rough-in HVAC - duct rework, heat pump / HRV-ERV - existing house |  | 12d | 2026-12-18 | 2027-01-13 | 93, 71, 33 | 2026-12-18 | 2027-01-13 | 12d | 12d |  |  | HVAC |
| 117 | 11.3 | Rough-in gas - fireplace, range, BBQ manifold |  | 3d | 2027-01-05 | 2027-01-07 | 116SS+5d, 45 | 2027-01-05 | 2027-01-07 | 3d | 16d | 7d |  | Gas fitter |
| 118 | 11.4 | Rough-in electrical incl. EV charger & solar conduit - existing house |  | 12d | 2026-12-23 | 2027-01-18 | 115SS+3d, 35, 43 | 2026-12-23 | 2027-01-18 | 12d | 9d |  |  | Electrician |
| 119 | 11.5 | Rough-in low voltage - data, security, AV, intercom reinstatement |  | 5d | 2027-01-08 | 2027-01-14 | 118SS+5d | 2027-01-08 | 2027-01-14 | 5d | 11d | 2d |  | LV contractor |
| 120 | 11.6 | Rough-in walkthrough with client & ID; changes |  | 2d | 2027-01-19 | 2027-01-20 | 115, 116, 117, 118, 119 | 2027-01-19 | 2027-01-20 | 2d | 9d |  |  | Andrew / Stephen / Vicky |
| 121 | 11.7 | Rough-in inspections - existing house (plumbing, HVAC, framing, ESA) |  | 3d | 2027-01-21 | 2027-01-25 | 120 | 2027-01-21 | 2027-01-25 | 3d | 9d |  |  | City / ESA |
| 122 | 11.8 | Rough-in inspections passed - existing house | milestone | 0d | 2027-01-25 | 2027-01-25 | 121 | 2027-01-25 | 2027-01-25 |  | 9d |  | 2027-02-05 |  |
| 123 | 11.9 | Rough-in all trades - rear addition & box bays |  | 8d | 2027-03-09 | 2027-03-18 | 107, 99, 120, 113 | 2027-03-09 | 2027-03-18 | 8d |  |  |  | All MEP trades |
| 124 | 11.10 | Rough-in inspections - rear addition |  | 2d | 2027-03-19 | 2027-03-22 | 123 | 2027-03-19 | 2027-03-22 | 2d |  |  |  | City / ESA |

Notes:
- 104: Front windows to remain per budget; removal per demolition drawings.
- 116: Reuse 2 Enercare units unless Net Zero heat pump route chosen.

| ID | WBS | Task | Type | Duration | Start | Finish | Predecessors | Baseline start | Baseline finish | Baseline duration | Total slack | Free slack | Responsible |
| --- | --- | --- | --- | --- | --- | --- | --- | --- | --- | --- | --- | --- | --- |
| 125 | 12 | **Insulation, Air Sealing & Drywall** |  | 78d | 2027-01-14 | 2027-05-05 |  |  |  |  | 41d |  |  |
| 126 | 12.1 | AeroSeal duct sealing (reused ductwork) |  | 2d | 2027-01-14 | 2027-01-15 | 116 | 2027-01-14 | 2027-01-15 | 2d | 147d |  | HVAC |
| 127 | 12.2 | Insulation & VB - existing house, sound insulation |  | 6d | 2027-01-26 | 2027-02-02 | 122, 36 | 2027-01-26 | 2027-02-02 | 6d | 33d |  | Insulation trade |
| 128 | 12.3 | Insulation & VB - addition, ceiling spray foam |  | 3d | 2027-03-23 | 2027-03-25 | 124, 127 | 2027-03-23 | 2027-03-25 | 3d |  |  | Insulation trade |
| 129 | 12.4 | Insulation / VB inspection |  | 1d | 2027-03-29 | 2027-03-29 | 128 | 2027-03-29 | 2027-03-29 | 1d |  |  | City inspector |
| 130 | 12.5 | Mid-construction blower door test |  | 1d | 2027-03-30 | 2027-03-30 | 129, 104, 105 | 2027-03-30 | 2027-03-30 | 1d |  |  | Building Knowledge |
| 131 | 12.6 | Board drywall |  | 12d | 2027-03-31 | 2027-04-15 | 130 | 2027-03-31 | 2027-04-15 | 12d |  |  | Drywall trade |
| 132 | 12.7 | Tape & finish drywall |  | 12d | 2027-04-07 | 2027-04-22 | 131SS+5d | 2027-04-07 | 2027-04-22 | 12d |  |  | Drywall trade |
| 133 | 12.8 | Prime drywall (tinted) |  | 3d | 2027-04-23 | 2027-04-27 | 132 | 2027-04-23 | 2027-04-27 | 3d |  |  | Painter |
| 134 | 12.9 | Plaster mouldings |  | 6d | 2027-04-28 | 2027-05-05 | 133, 48 | 2027-04-28 | 2027-05-05 | 6d | 7d |  | Plaster trade |
| 135 | 12.10 | Interior environment controlled (permanent HVAC running) | milestone | 0d | 2027-04-27 | 2027-04-27 | 133, 72 | 2027-04-27 | 2027-04-27 |  | 38d | 5d | HVAC |
| 136 | 13 | **Interior Finishes** |  | 58d | 2027-04-28 | 2027-07-20 |  |  |  |  |  |  |  |
| 137 | 13.1 | Floor tile & Schluter waterproofing |  | 12d | 2027-04-28 | 2027-05-13 | 133, 37, 47FS+15d | 2027-04-28 | 2027-05-13 | 12d | 10d |  | Tile setter |
| 138 | 13.2 | Hardwood & LVP |  | 15d | 2027-05-05 | 2027-05-26 | 137SS+5d, 135, 47FS+20d | 2027-05-05 | 2027-05-26 | 15d | 33d |  | Flooring trade |
| 139 | 13.3 | Install interior stairs & railings |  | 5d | 2027-05-12 | 2027-05-18 | 138SS+5d, 41 | 2027-05-12 | 2027-05-18 | 5d | 33d | 26d | Stair supplier |
| 140 | 13.4 | Doors, trim, panelling, closets & shelving |  | 25d | 2027-05-06 | 2027-06-10 | 134, 37, 48FS+20d | 2027-05-06 | 2027-06-10 | 25d | 7d |  | Trim carpenter |
| 141 | 13.5 | Install cabinetry - kitchen, island, servery, vanities, laundry |  | 10d | 2027-04-28 | 2027-05-11 | 40, 133 | 2027-04-28 | 2027-05-11 | 10d |  |  | Cabinetmaker |
| 142 | 13.6 | Template, fabricate & install countertops |  | 12d | 2027-05-12 | 2027-05-28 | 141, 50 | 2027-05-12 | 2027-05-28 | 12d |  |  | Countertop fabricator |
| 143 | 13.7 | Wall tile, showers & backsplashes |  | 15d | 2027-05-31 | 2027-06-18 | 142, 137 | 2027-05-31 | 2027-06-18 | 15d |  |  | Tile setter |
| 144 | 13.8 | Interior painting |  | 25d | 2027-05-20 | 2027-06-24 | 140SS+10d, 51 | 2027-05-20 | 2027-06-24 | 25d | 7d |  | Painter |
| 145 | 13.9 | Reinstall salvaged items; fireplace brick cladding & mantel |  | 5d | 2027-06-11 | 2027-06-17 | 140 | 2027-06-11 | 2027-06-17 | 5d | 17d |  | Trim carpenter / mason |
| 146 | 13.10 | Shower glass - template, fabricate, install |  | 12d | 2027-06-21 | 2027-07-07 | 143 | 2027-06-21 | 2027-07-07 | 12d |  |  | Glass supplier |
| 147 | 13.11 | Appliances delivery & install |  | 2d | 2027-05-31 | 2027-06-01 | 142, 49FS+30d | 2027-05-31 | 2027-06-01 | 2d | 29d |  | Appliance supplier |
| 148 | 13.12 | Plumbing finishing - fixtures |  | 5d | 2027-06-21 | 2027-06-25 | 143, 142 | 2027-06-21 | 2027-06-25 | 5d | 11d |  | Plumber |
| 149 | 13.13 | Electrical finishing - devices, pot lights, fixtures |  | 6d | 2027-06-04 | 2027-06-11 | 144SS+10d | 2027-06-04 | 2027-06-11 | 6d | 21d |  | Electrician |
| 150 | 13.14 | HVAC finishing - grilles, humidifier, HRV balancing |  | 3d | 2027-06-25 | 2027-06-29 | 144 | 2027-06-25 | 2027-06-29 | 3d | 9d |  | HVAC |
| 151 | 13.15 | Door hardware, bath accessories, mirrors |  | 4d | 2027-07-08 | 2027-07-13 | 144, 146 | 2027-07-08 | 2027-07-13 | 4d |  |  | Trim carpenter |
| 152 | 13.16 | Sand & finish hardwood; stain stairs |  | 5d | 2027-06-25 | 2027-07-02 | 144, 139 | 2027-06-25 | 2027-07-02 | 5d | 7d |  | Flooring trade |
| 153 | 13.17 | Final trade & paint touch-ups |  | 5d | 2027-07-14 | 2027-07-20 | 152, 151, 149, 148, 150, 147, 145 | 2027-07-14 | 2027-07-20 | 5d |  |  | All trades |

Notes:
- 126: ~$2,500/unit; not in Rev 3.
- 127: Older front section: brick, minimal insulation - priority for comfort.

| ID | WBS | Task | Type | Duration | Start | Finish | Predecessors | Baseline start | Baseline finish | Baseline duration | Total slack | Free slack | Constraint | Deadline | Responsible |
| --- | --- | --- | --- | --- | --- | --- | --- | --- | --- | --- | --- | --- | --- | --- | --- |
| 154 | 14 | **Exterior Finishes & Landscaping** |  | 59d | 2027-04-05 | 2027-06-25 |  |  |  |  | 35d |  |  |  |  |
| 155 | 14.1 | Cedar shake siding |  | 10d | 2027-04-05 | 2027-04-16 | 107, 46 | 2027-04-05 | 2027-04-16 | 10d | 35d |  | start no earlier than 2027-04-05 |  | Siding trade |
| 156 | 14.2 | Exterior trim, columns, fascia & soffits |  | 15d | 2027-04-12 | 2027-04-30 | 155SS+5d | 2027-04-12 | 2027-04-30 | 15d | 35d |  |  |  | Exterior carpenter |
| 157 | 14.3 | Masonry repointing & flagstone front porch |  | 8d | 2027-04-19 | 2027-04-28 | 107 | 2027-04-19 | 2027-04-28 | 8d | 53d | 18d | start no earlier than 2027-04-19 |  | Mason |
| 158 | 14.4 | Porch ceilings - cedar T&G |  | 4d | 2027-05-03 | 2027-05-06 | 156 | 2027-05-03 | 2027-05-06 | 4d | 35d |  |  |  | Exterior carpenter |
| 159 | 14.5 | Eavestroughs & downspouts |  | 3d | 2027-05-03 | 2027-05-05 | 156 | 2027-05-03 | 2027-05-05 | 3d | 71d |  |  |  | Eavestrough trade |
| 160 | 14.6 | Solar PV (required for Net Zero - not in budget) |  | 5d | 2027-05-03 | 2027-05-07 | 102, 12 | 2027-05-03 | 2027-05-07 | 5d | 69d |  | start no earlier than 2027-05-03 |  | Solar contractor |
| 161 | 14.7 | Rear deck (Trex), balcony & exterior railings |  | 8d | 2027-05-03 | 2027-05-12 | 156, 46 | 2027-05-03 | 2027-05-12 | 8d | 43d | 8d |  |  | Deck builder |
| 162 | 14.8 | Exterior painting & caulking |  | 12d | 2027-05-07 | 2027-05-25 | 156, 158 | 2027-05-07 | 2027-05-25 | 12d | 35d |  |  |  | Painter |
| 163 | 14.9 | Garage door |  | 2d | 2027-05-26 | 2027-05-27 | 162 | 2027-05-26 | 2027-05-27 | 2d | 56d |  |  |  | Garage door supplier |
| 164 | 14.10 | Hard landscaping - interlock, walls, fences |  | 15d | 2027-05-26 | 2027-06-15 | 161, 162, 157 | 2027-05-26 | 2027-06-15 | 15d | 35d |  |  |  | Landscaper |
| 165 | 14.11 | Soft landscaping & restoration of disturbed areas |  | 8d | 2027-06-16 | 2027-06-25 | 164 | 2027-06-16 | 2027-06-25 | 8d | 35d |  |  |  | Landscaper |
| 166 | 14.12 | CVC notice of completion | milestone | 0d | 2027-06-25 | 2027-06-25 | 165 | 2027-06-25 | 2027-06-25 |  | 35d | 23d |  |  | Andrew |
| 167 | 15 | **Commissioning, Inspections & Handover** |  | 19d | 2027-07-21 | 2027-08-17 |  |  |  |  |  |  |  |  |  |
| 168 | 15.1 | Final blower door & EnerGuide / Net Zero labelling test |  | 2d | 2027-07-21 | 2027-07-22 | 153 | 2027-07-21 | 2027-07-22 | 2d | 17d | 5d |  |  | Building Knowledge |
| 169 | 15.2 | Duct cleaning |  | 1d | 2027-07-21 | 2027-07-21 | 153 | 2027-07-21 | 2027-07-21 | 1d | 2d |  |  |  | Duct cleaner |
| 170 | 15.3 | Final building inspection |  | 3d | 2027-07-21 | 2027-07-23 | 153, 162 | 2027-07-21 | 2027-07-23 | 3d |  |  |  |  | City inspector |
| 171 | 15.4 | Final cleaning, windows & power wash |  | 4d | 2027-07-26 | 2027-07-29 | 170, 169 | 2027-07-26 | 2027-07-29 | 4d |  |  |  |  | Cleaners |
| 172 | 15.5 | Client walkthrough & deficiency list |  | 2d | 2027-07-30 | 2027-08-03 | 171 | 2027-07-30 | 2027-08-03 | 2d |  |  |  |  | Andrew / Stephen |
| 173 | 15.6 | Occupancy / substantial completion | milestone | 0d | 2027-07-29 | 2027-07-29 | 171, 168, 166 | 2027-07-29 | 2027-07-29 |  | 12d | 2d |  | 2027-08-30 |  |
| 174 | 15.7 | Client move-in | milestone | 0d | 2027-08-03 | 2027-08-03 | 173, 172 | 2027-08-03 | 2027-08-03 |  | 10d |  |  | 2027-09-01 | Stephen (Owner) |
| 175 | 15.8 | Deficiency completion |  | 10d | 2027-08-04 | 2027-08-17 | 172 | 2027-08-04 | 2027-08-17 | 10d |  |  |  |  | All trades |

Notes:
- 160: $30-50K. Scope gap - confirm with Net Zero decision.
- 164: Landscaping allowance $100,000.
- 165: CVC condition: restore to existing condition or better.
